# Instrumentación para monitoreo de redes de telefonía móvil

How a schedule from MS Project changed from version to version. A marks actual dates.

## Version 1 (saved 2020-10-16)

Note of the change: Nuevo gannt y cambios kicad tranceptor

| ID | WBS | Task | Duration | Start | Finish | Predecessors | Complete | Total float | Constraint |
| --- | --- | --- | --- | --- | --- | --- | --- | --- | --- |
| 1 |  | Definición de requerimientos | 10d | 2020-07-20 A | 2020-07-31 A |  | 100% |  | start no earlier than 2020-07-20 |
| 2 |  | Relevamiento de soluciones existentes | 10d | 2020-08-03 A | 2020-08-14 A | 1 | 100% |  |  |
| 3 |  | Diseño de Arquitectura | 10d | 2020-08-17 A | 2020-08-28 A | 2 | 100% |  |  |
| 4 |  | Selección de componentes de cada bloque de la arquitectura | 60d | 2020-08-31 A | 2020-11-20 | 3 | 70% | 0d |  |
| 5 |  | Primer esquematico terminado | 0d | 2020-11-20 | 2020-11-20 | 4 |  | 215d |  |
| 6 | 6 | **Simulaciones** | 75d | 2020-11-23 | 2021-03-05 | 4 |  | 0d |  |
| 7 |  | Alimentación | 15d | 2020-11-23 | 2020-12-11 |  |  | 0d |  |
| 8 |  | Recepción | 15d | 2020-12-14 | 2021-01-01 | 7 |  | 0d |  |
| 9 |  | Filtros y adquisición | 15d | 2021-01-04 | 2021-01-22 | 8 |  | 0d |  |
| 10 |  | Procesamiento | 15d | 2021-01-25 | 2021-02-12 | 9 |  | 0d |  |
| 11 |  | comunicación / interfaz PC | 15d | 2021-02-15 | 2021-03-05 | 10 |  | 0d |  |
| 12 | 7 | **Tests unitarios y ajustes** | 75d | 2021-03-08 | 2021-06-18 | 6 |  | 0d |  |
| 13 |  | Alimentación | 15d | 2021-03-08 | 2021-03-26 |  |  | 0d |  |
| 14 |  | Recepción | 15d | 2021-03-29 | 2021-04-16 | 13 |  | 0d |  |
| 15 |  | Filtros y adquisición | 15d | 2021-04-19 | 2021-05-07 | 14 |  | 0d |  |
| 16 |  | Procesamiento | 15d | 2021-05-10 | 2021-05-28 | 15 |  | 0d |  |
| 17 |  | comunicación / interfaz PC | 15d | 2021-05-31 | 2021-06-18 | 16 |  | 0d |  |
| 18 |  | Integración (fisica) | 20d | 2021-06-21 | 2021-07-16 | 12 |  | 0d |  |
| 19 |  | Test completo | 25d | 2021-07-19 | 2021-08-20 | 18 |  | 0d |  |
| 20 |  | Diseño completamente funcional | 0d | 2021-08-20 | 2021-08-20 | 19 |  | 20d |  |
| 21 |  | Testeo con equipo patrón | 10d | 2021-08-23 | 2021-09-03 | 19 |  | 0d |  |
| 22 |  | Difusión del proyecto | 10d | 2021-09-06 | 2021-09-17 | 21 |  | 0d |  |
| 23 |  | Presentación ante la cátedra | 0d | 2021-09-17 | 2021-09-17 | 22 |  | 0d |  |

## Version 2 (saved 2021-01-28)

Note of the change: Union monaco-master gantt y aclaraciones

Last finish 2021-09-17 → 2021-10-29 (+42d).

Added:

| ID | Task | Duration | Start | Finish | Predecessors | Constraint |
| --- | --- | --- | --- | --- | --- | --- |
| 5 | Hoja 1 - Esquemático - FrontEnd | 40d | 2021-01-11 | 2021-03-05 |  | start no earlier than 2021-01-11 |
| 6 | Hoja 2 - Esquemático - Tranceptor | 40d | 2021-01-11 | 2021-03-05 |  | start no earlier than 2021-01-11 |
| 7 | Hoja 3 - Esquemático - MCU | 30d | 2021-03-08 | 2021-04-16 | 6 |  |
| 9 | Elaboración del PCB | 30d | 2021-04-19 | 2021-05-28 | 8 |  |
| 19 | Redacción de Proyecto | 15d | 2021-10-04 | 2021-10-22 | 18 |  |

Removed: 6 Simulaciones; 7 Alimentación; 8 Recepción; 9 Filtros y adquisición; 10 Procesamiento; 11 comunicación / interfaz PC; 18 Integración (fisica)

Changed:

| ID | Task | Start | Finish | Duration | Total float | Predecessors |
| --- | --- | --- | --- | --- | --- | --- |
| 8 | Primer esquematico terminado | 2020-11-20 → 2021-04-16 (+147d) | 2020-11-20 → 2021-04-16 (+147d) |  | 215d → 0d | 4 → 7 |
| 10 | **Tests unitarios y ajustes** | 2021-03-08 → 2021-05-31 (+84d) | 2021-06-18 → 2021-08-06 (+49d) | 75d → 50d |  | Simulaciones → 9 |
| 11 | Alimentación | 2021-03-08 → 2021-05-31 (+84d) | 2021-03-26 → 2021-06-11 (+77d) | 15d → 10d |  | none → 9 |
| 12 | Recepción | 2021-03-29 → 2021-06-14 (+77d) | 2021-04-16 → 2021-06-25 (+70d) | 15d → 10d |  |  |
| 13 | Filtros y adquisición | 2021-04-19 → 2021-06-28 (+70d) | 2021-05-07 → 2021-07-09 (+63d) | 15d → 10d |  |  |
| 14 | Procesamiento | 2021-05-10 → 2021-07-12 (+63d) | 2021-05-28 → 2021-07-23 (+56d) | 15d → 10d |  |  |
| 15 | comunicación / interfaz PC | 2021-05-31 → 2021-07-26 (+56d) | 2021-06-18 → 2021-08-06 (+49d) | 15d → 10d |  |  |
| 16 | Test completo | 2021-07-19 → 2021-08-09 (+21d) | 2021-08-20 → 2021-09-17 (+28d) | 25d → 30d |  | Integración (fisica) → 15 |
| 17 | Diseño completamente funcional | 2021-08-20 → 2021-09-17 (+28d) | 2021-08-20 → 2021-09-17 (+28d) |  | 20d → 30d |  |
| 18 | Testeo con equipo patrón | 2021-08-23 → 2021-09-20 (+28d) | 2021-09-03 → 2021-10-01 (+28d) |  |  |  |
| 20 | Difusión del proyecto | 2021-09-06 → 2021-10-25 (+49d) | 2021-09-17 → 2021-10-29 (+42d) | 10d → 5d |  | 18 → 19, 18 |
| 21 | Presentación ante la cátedra | 2021-09-17 → 2021-10-29 (+42d) | 2021-09-17 → 2021-10-29 (+42d) |  |  |  |
